# Cronograma

Schedule from MS Project, 2015-03-26 to 2015-08-27, 9 hours a day.

## Calendars

- Standard: Mon-Fri 08:00-12:00, 13:00-17:00; Sat-Sun off. Exceptions (off unless hours are given): 2015-04-02 to 2015-04-03 (Semana Santa), 2015-05-01 (Dia trabajo), 2015-05-18 (Festivo), 2015-06-08 (Festivo), 2015-06-15 (Festivo), 2015-06-29 (Festivo), 2015-07-20 (Festivo), 2015-08-07 (Festivo), 2015-08-17 (Festivo).

## Resources

| Resource |
| --- |
| Gabriel |
| Julian |

## Schedule

| ID | WBS | Task | Duration | Start | Finish | Predecessors | Baseline start | Baseline finish | Baseline duration | Total slack | Resources | Work |
| --- | --- | --- | --- | --- | --- | --- | --- | --- | --- | --- | --- | --- |
| 1 | 1 | **Tuils Proyecto** | 89.22d | 2015-03-26 08:00 | 2015-08-27 11:00 |  | 2015-03-25 08:00 | 2015-08-26 16:00 | 89.67d | 0d |  | 1201h |
| 2 | 1.1 | **Inicio** | 2.5d | 2015-03-26 08:00 | 2015-03-30 15:30 |  | 2015-03-25 08:00 | 2015-03-27 15:30 | 2.5d |  |  | 22.5h |
| 3 | 1.1.1 | **Configurar ambiente Inicial** | 1.5d | 2015-03-26 08:00 | 2015-03-27 14:30 |  | 2015-03-25 08:00 | 2015-03-26 14:30 | 1.5d | 0d |  | 13.5h |
| 4 | 1.1.1.1 | Configurar estructura github | 1.5h | 2015-03-26 08:00 | 2015-03-26 09:30 |  | 2015-03-25 08:00 | 2015-03-25 09:30 | 1.5h | 0d | Gabriel | 1.5h |
| 5 | 1.1.1.2 | Configurar solución | 4h | 2015-03-26 09:30 | 2015-03-26 14:30 | 4 | 2015-03-25 09:30 | 2015-03-25 14:30 | 4h | 0d | Gabriel | 4h |
| 6 | 1.1.1.3 | Crear BD | 1h | 2015-03-26 14:30 | 2015-03-26 15:30 | 5 | 2015-03-25 14:30 | 2015-03-25 15:30 | 1h | 0d | Gabriel | 1h |
| 7 | 1.1.1.4 | Agregar proyecto a Github | 4h | 2015-03-26 15:30 | 2015-03-27 10:30 | 6 | 2015-03-25 15:30 | 2015-03-26 10:30 | 4h | 0d | Gabriel | 4h |
| 8 | 1.1.1.5 | Configurar idioma Español | 3h | 2015-03-27 10:30 | 2015-03-27 14:30 | 7 | 2015-03-26 10:30 | 2015-03-26 14:30 | 3h | 0d | Gabriel | 3h |
| 9 | 1.1.2 | **Diseño** | 1d | 2015-03-27 14:30 | 2015-03-30 15:30 | 3 | 2015-03-26 14:30 | 2015-03-27 15:30 | 1d | 0d |  | 9h |
| 10 | 1.1.2.1 | Diseño de BD | 9h | 2015-03-27 14:30 | 2015-03-30 15:30 |  | 2015-03-26 14:30 | 2015-03-27 15:30 | 9h | 0d | Gabriel | 9h |
| 11 | 1.2 | **Fase 1 (Ventas)** | 53.83d | 2015-03-27 08:00 | 2015-06-30 13:30 |  | 2015-03-27 15:30 | 2015-06-30 08:30 | 52.67d | 0d |  | 780h |
| 12 | 1.2.1 | **Desarrollo** | 46.22d | 2015-03-30 15:30 | 2015-06-18 15:30 | 2 | 2015-03-27 15:30 | 2015-06-18 10:30 | 46.67d | 0d |  | 416h |
| 13 | 1.2.1.1 | **Publicacion Producto** | 8.89d | 2015-03-30 15:30 | 2015-04-15 15:30 |  | 2015-03-27 15:30 | 2015-04-15 10:30 | 9.33d | 0d |  | 80h |
| 14 | 1.2.1.1.1 | **Paso1 (Seleccionar Categoria)** | 2.44d | 2015-03-30 15:30 | 2015-04-06 13:30 |  | 2015-03-27 15:30 | 2015-04-01 13:30 | 2.44d | 0d |  | 22h |
| 15 | 1.2.1.1.1.1 | Ajustes de BD | 2h | 2015-03-30 15:30 | 2015-03-31 08:30 |  | 2015-03-27 15:30 | 2015-03-30 08:30 | 2h | 0d | Gabriel | 2h |
| 16 | 1.2.1.1.1.2 | Menú Superior Tipo Producto | 2h | 2015-03-31 08:30 | 2015-03-31 10:30 | 15 | 2015-03-30 08:30 | 2015-03-30 10:30 | 2h | 0d | Gabriel | 2h |
| 17 | 1.2.1.1.1.3 | Paso actual en el proceso | 2h | 2015-03-31 10:30 | 2015-03-31 13:30 | 16 | 2015-03-30 10:30 | 2015-03-30 13:30 | 2h | 0d | Gabriel | 2h |
| 18 | 1.2.1.1.1.4 | **Seleccion de Categorias** | 1.44d | 2015-03-31 13:30 | 2015-04-06 09:30 | 17 | 2015-03-30 13:30 | 2015-04-01 09:30 | 1.44d | 0d |  | 13h |
| 19 | 1.2.1.1.1.4.1 | Acceso a Datos | 3h | 2015-03-31 13:30 | 2015-03-31 16:30 |  | 2015-03-30 13:30 | 2015-03-30 16:30 | 3h | 0d | Gabriel | 3h |
| 20 | 1.2.1.1.1.4.2 | Filtro por seleccion | 3h | 2015-03-31 16:30 | 2015-04-01 10:30 | 19 | 2015-03-30 16:30 | 2015-03-31 10:30 | 3h | 0d | Gabriel | 3h |
| 21 | 1.2.1.1.1.4.3 | Filtro por texto | 3h | 2015-04-01 10:30 | 2015-04-01 14:30 | 20 | 2015-03-31 10:30 | 2015-03-31 14:30 | 3h | 0d | Gabriel | 3h |
| 22 | 1.2.1.1.1.4.4 | Ultimo seleccionado | 2h | 2015-04-01 14:30 | 2015-04-01 16:30 | 21 | 2015-03-31 14:30 | 2015-03-31 16:30 | 2h | 0d | Gabriel | 2h |
| 23 | 1.2.1.1.1.4.5 | Guardar | 2h | 2015-04-01 16:30 | 2015-04-06 09:30 | 22 | 2015-03-31 16:30 | 2015-04-01 09:30 | 2h | 0d | Gabriel | 2h |
| 24 | 1.2.1.1.1.5 | Pruebas Unitarias | 3h | 2015-04-06 09:30 | 2015-04-06 13:30 | 18 | 2015-04-01 09:30 | 2015-04-01 13:30 | 3h | 0d | Gabriel | 3h |

| ID | WBS | Task | Duration | Start | Finish | Predecessors | Baseline start | Baseline finish | Baseline duration | Total slack | Resources | Work |
| --- | --- | --- | --- | --- | --- | --- | --- | --- | --- | --- | --- | --- |
| 25 | 1.2.1.1.2 | **Paso2 (Detalle Producto)** | 2.56d | 2015-04-06 13:30 | 2015-04-09 11:30 | 14 | 2015-04-01 13:30 | 2015-04-08 11:30 | 2.56d | 0d |  | 23h |
| 26 | 1.2.1.1.2.1 | Menu tipo producto | 1h | 2015-04-06 13:30 | 2015-04-06 14:30 |  | 2015-04-01 13:30 | 2015-04-01 14:30 | 1h | 0d | Gabriel | 1h |
| 27 | 1.2.1.1.2.2 | Menu numero de paso | 1h | 2015-04-06 14:30 | 2015-04-06 15:30 | 26 | 2015-04-01 14:30 | 2015-04-01 15:30 | 1h | 0d | Gabriel | 1h |
| 28 | 1.2.1.1.2.3 | Acceso a datos | 2h | 2015-04-06 15:30 | 2015-04-07 08:30 | 27 | 2015-04-01 15:30 | 2015-04-06 08:30 | 2h | 0d | Gabriel | 2h |
| 29 | 1.2.1.1.2.4 | Datos básicos producto | 1h | 2015-04-07 08:30 | 2015-04-07 09:30 | 28 | 2015-04-06 08:30 | 2015-04-06 09:30 | 1h | 0d | Gabriel | 1h |
| 30 | 1.2.1.1.2.5 | Seleccionar tipo de moto | 5h | 2015-04-07 09:30 | 2015-04-07 15:30 | 29 | 2015-04-06 09:30 | 2015-04-06 15:30 | 5h | 0d | Gabriel | 5h |
| 31 | 1.2.1.1.2.6 | Datos de envío | 3h | 2015-04-07 15:30 | 2015-04-08 09:30 | 30 | 2015-04-06 15:30 | 2015-04-07 09:30 | 3h | 0d | Gabriel | 3h |
| 32 | 1.2.1.1.2.7 | Editor HTML | 6h | 2015-04-08 09:30 | 2015-04-08 16:30 | 30, 31 | 2015-04-07 09:30 | 2015-04-07 16:30 | 6h | 0d | Gabriel | 6h |
| 33 | 1.2.1.1.2.8 | Guardar | 2h | 2015-04-08 16:30 | 2015-04-09 09:30 | 32 | 2015-04-07 16:30 | 2015-04-08 09:30 | 2h | 0d | Gabriel | 2h |
| 34 | 1.2.1.1.2.9 | Pruebas unitarias | 2h | 2015-04-09 09:30 | 2015-04-09 11:30 | 33 | 2015-04-08 09:30 | 2015-04-08 11:30 | 2h | 0d | Gabriel | 2h |
| 35 | 1.2.1.1.3 | **Paso3 (Seleccionador Fotos)** | 2d | 2015-04-09 11:30 | 2015-04-13 14:30 | 25 | 2015-04-08 11:30 | 2015-04-10 14:30 | 2d | 0d |  | 18h |
| 36 | 1.2.1.1.3.1 | Mostrar fotos | 3h | 2015-04-09 11:30 | 2015-04-09 15:30 |  | 2015-04-08 11:30 | 2015-04-08 15:30 | 3h | 0d | Gabriel | 3h |
| 37 | 1.2.1.1.3.2 | Seleccionar foto | 3h | 2015-04-09 15:30 | 2015-04-10 09:30 | 36 | 2015-04-08 15:30 | 2015-04-09 09:30 | 3h | 0d | Gabriel | 3h |
| 38 | 1.2.1.1.3.3 | Cambiar foto | 3h | 2015-04-10 09:30 | 2015-04-10 13:30 | 37 | 2015-04-09 09:30 | 2015-04-09 13:30 | 3h | 0d | Gabriel | 3h |
| 39 | 1.2.1.1.3.4 | Eliminar foto | 3h | 2015-04-10 13:30 | 2015-04-10 16:30 | 38 | 2015-04-09 13:30 | 2015-04-09 16:30 | 3h | 0d | Gabriel | 3h |
| 40 | 1.2.1.1.3.5 | Guardar fotos | 3h | 2015-04-10 16:30 | 2015-04-13 10:30 | 39 | 2015-04-09 16:30 | 2015-04-10 10:30 | 3h | 0d | Gabriel | 3h |
| 41 | 1.2.1.1.3.6 | Pruebas unitarias | 3h | 2015-04-13 10:30 | 2015-04-13 14:30 | 40 | 2015-04-10 10:30 | 2015-04-10 14:30 | 3h | 0d | Gabriel | 3h |
| 42 | 1.2.1.1.4 | **Paso 4 (Resumen)** | 1.22d | 2015-04-13 14:30 | 2015-04-15 08:30 | 35 | 2015-04-10 14:30 | 2015-04-14 08:30 | 1.22d | 0d |  | 11h |
| 43 | 1.2.1.1.4.1 | Datos basicos | 2h | 2015-04-13 14:30 | 2015-04-13 16:30 |  | 2015-04-10 14:30 | 2015-04-10 16:30 | 2h | 0d | Gabriel | 2h |
| 44 | 1.2.1.1.4.2 | Imagenes | 2h | 2015-04-13 16:30 | 2015-04-14 09:30 | 43 | 2015-04-10 16:30 | 2015-04-13 09:30 | 2h | 0d | Gabriel | 2h |
| 45 | 1.2.1.1.4.3 | Aceptar terminos y condiciones | 1h | 2015-04-14 09:30 | 2015-04-14 10:30 | 44 | 2015-04-13 09:30 | 2015-04-13 10:30 | 1h | 0d | Gabriel | 1h |
| 46 | 1.2.1.1.4.4 | Volver | 2h | 2015-04-14 10:30 | 2015-04-14 13:30 | 45 | 2015-04-13 10:30 | 2015-04-13 13:30 | 2h | 0d | Gabriel | 2h |
| 47 | 1.2.1.1.4.5 | Publicar | 2h | 2015-04-14 13:30 | 2015-04-14 15:30 | 46 | 2015-04-13 13:30 | 2015-04-13 15:30 | 2h | 0d | Gabriel | 2h |
| 48 | 1.2.1.1.4.6 | Pruebas unitarias | 2h | 2015-04-14 15:30 | 2015-04-15 08:30 | 47 | 2015-04-13 15:30 | 2015-04-14 08:30 | 2h | 0d | Gabriel | 2h |
| 49 | 1.2.1.1.5 | Ajustar Diseño | 6h | 2015-04-15 08:30 | 2015-04-15 15:30 | 42, 191 | 2015-04-14 13:30 | 2015-04-15 10:30 | 6h | 0d | Gabriel | 6h |
| 50 | 1.2.1.2 | Seleccionar tipo de producto | 4h | 2015-04-15 15:30 | 2015-04-16 10:30 | 13 | 2015-04-15 10:30 | 2015-04-15 15:30 | 4h | 0d | Gabriel | 4h |

| ID | WBS | Task | Duration | Start | Finish | Predecessors | Baseline start | Baseline finish | Baseline duration | Total slack | Resources | Work |
| --- | --- | --- | --- | --- | --- | --- | --- | --- | --- | --- | --- | --- |
| 51 | 1.2.1.3 | **Publicación Moto** | 6.22d | 2015-04-16 10:30 | 2015-04-27 10:30 | 50 | 2015-04-15 15:30 | 2015-04-24 15:30 | 6.22d | 0d |  | 56h |
| 52 | 1.2.1.3.1 | **Paso1 (Seleccionar Categoria)** | 2.22d | 2015-04-16 10:30 | 2015-04-20 15:30 |  | 2015-04-15 15:30 | 2015-04-20 10:30 | 2.22d | 0d |  | 20h |
| 53 | 1.2.1.3.1.1 | Ajustes de BD | 4h | 2015-04-16 10:30 | 2015-04-16 15:30 |  | 2015-04-15 15:30 | 2015-04-16 10:30 | 4h | 0d | Gabriel | 4h |
| 54 | 1.2.1.3.1.2 | Menú Superior Tipo Producto | 1h | 2015-04-16 15:30 | 2015-04-16 16:30 | 53 | 2015-04-16 10:30 | 2015-04-16 11:30 | 1h | 0d | Gabriel | 1h |
| 55 | 1.2.1.3.1.3 | Paso actual en el proceso | 1h | 2015-04-16 16:30 | 2015-04-17 08:30 | 54 | 2015-04-16 11:30 | 2015-04-16 13:30 | 1h | 0d | Gabriel | 1h |
| 56 | 1.2.1.3.1.4 | **Seleccion de Categorias** | 1.22d | 2015-04-17 08:30 | 2015-04-20 11:30 | 55 | 2015-04-16 13:30 | 2015-04-17 16:30 | 1.22d | 0d |  | 11h |
| 57 | 1.2.1.3.1.4.1 | Acceso a Datos | 4h | 2015-04-17 08:30 | 2015-04-17 13:30 |  | 2015-04-16 13:30 | 2015-04-17 08:30 | 4h | 0d | Gabriel | 4h |
| 58 | 1.2.1.3.1.4.2 | Filtro por seleccion | 2h | 2015-04-17 13:30 | 2015-04-17 15:30 | 57 | 2015-04-17 08:30 | 2015-04-17 10:30 | 2h | 0d | Gabriel | 2h |
| 59 | 1.2.1.3.1.4.3 | Filtro por texto | 2h | 2015-04-17 15:30 | 2015-04-20 08:30 | 58 | 2015-04-17 10:30 | 2015-04-17 13:30 | 2h | 0d | Gabriel | 2h |
| 60 | 1.2.1.3.1.4.4 | Ultimo seleccionado | 1h | 2015-04-20 08:30 | 2015-04-20 09:30 | 59 | 2015-04-17 13:30 | 2015-04-17 14:30 | 1h | 0d | Gabriel | 1h |
| 61 | 1.2.1.3.1.4.5 | Guardar | 2h | 2015-04-20 09:30 | 2015-04-20 11:30 | 60 | 2015-04-17 14:30 | 2015-04-17 16:30 | 2h | 0d | Gabriel | 2h |
| 62 | 1.2.1.3.1.5 | Pruebas Unitarias | 3h | 2015-04-20 11:30 | 2015-04-20 15:30 | 56 | 2015-04-17 16:30 | 2015-04-20 10:30 | 3h | 0d | Gabriel | 3h |
| 63 | 1.2.1.3.2 | **Paso2 (Detalle Producto)** | 1.56d | 2015-04-20 15:30 | 2015-04-22 13:30 | 52 | 2015-04-20 10:30 | 2015-04-22 08:30 | 1.56d | 0d |  | 14h |
| 64 | 1.2.1.3.2.1 | Acceso a datos | 4h | 2015-04-20 15:30 | 2015-04-21 10:30 |  | 2015-04-20 10:30 | 2015-04-20 15:30 | 4h | 0d | Gabriel | 4h |
| 65 | 1.2.1.3.2.2 | Datos básicos producto | 1h | 2015-04-21 10:30 | 2015-04-21 11:30 | 64 | 2015-04-20 15:30 | 2015-04-20 16:30 | 1h | 0d | Gabriel | 1h |
| 66 | 1.2.1.3.2.3 | Seleccionar tipo de moto | 5h | 2015-04-21 11:30 | 2015-04-22 08:30 | 65 | 2015-04-20 16:30 | 2015-04-21 13:30 | 5h | 0d | Gabriel | 5h |
| 67 | 1.2.1.3.2.4 | Guardar | 2h | 2015-04-22 08:30 | 2015-04-22 10:30 | 66 | 2015-04-21 13:30 | 2015-04-21 15:30 | 2h | 0d | Gabriel | 2h |
| 68 | 1.2.1.3.2.5 | Pruebas unitarias | 2h | 2015-04-22 10:30 | 2015-04-22 13:30 | 67 | 2015-04-21 15:30 | 2015-04-22 08:30 | 2h | 0d | Gabriel | 2h |
| 69 | 1.2.1.3.3 | **Paso3 (Seleccionador Fotos)** | 0.89d | 2015-04-22 13:30 | 2015-04-23 13:30 | 63 | 2015-04-22 08:30 | 2015-04-23 08:30 | 0.89d | 0d |  | 8h |
| 70 | 1.2.1.3.3.1 | Mostrar fotos | 2h | 2015-04-22 13:30 | 2015-04-22 15:30 |  | 2015-04-22 08:30 | 2015-04-22 10:30 | 2h | 0d | Gabriel | 2h |
| 71 | 1.2.1.3.3.2 | Seleccionar foto | 1h | 2015-04-22 15:30 | 2015-04-22 16:30 | 70 | 2015-04-22 10:30 | 2015-04-22 11:30 | 1h | 0d | Gabriel | 1h |
| 72 | 1.2.1.3.3.3 | Cambiar foto | 1h | 2015-04-22 16:30 | 2015-04-23 08:30 | 71 | 2015-04-22 11:30 | 2015-04-22 13:30 | 1h | 0d | Gabriel | 1h |
| 73 | 1.2.1.3.3.4 | Eliminar foto | 1h | 2015-04-23 08:30 | 2015-04-23 09:30 | 72 | 2015-04-22 13:30 | 2015-04-22 14:30 | 1h | 0d | Gabriel | 1h |
| 74 | 1.2.1.3.3.5 | Guardar fotos | 1h | 2015-04-23 09:30 | 2015-04-23 10:30 | 73 | 2015-04-22 14:30 | 2015-04-22 15:30 | 1h | 0d | Gabriel | 1h |
| 75 | 1.2.1.3.3.6 | Pruebas unitarias | 2h | 2015-04-23 10:30 | 2015-04-23 13:30 | 74 | 2015-04-22 15:30 | 2015-04-23 08:30 | 2h | 0d | Gabriel | 2h |

| ID | WBS | Task | Duration | Start | Finish | Predecessors | Baseline start | Baseline finish | Baseline duration | Total slack | Resources | Work |
| --- | --- | --- | --- | --- | --- | --- | --- | --- | --- | --- | --- | --- |
| 76 | 1.2.1.3.4 | **Paso 4 (Resumen)** | 0.89d | 2015-04-23 13:30 | 2015-04-24 13:30 | 69 | 2015-04-23 08:30 | 2015-04-24 08:30 | 0.89d | 0d |  | 8h |
| 77 | 1.2.1.3.4.1 | Datos basicos | 2h | 2015-04-23 13:30 | 2015-04-23 15:30 |  | 2015-04-23 08:30 | 2015-04-23 10:30 | 2h | 0d | Gabriel | 2h |
| 78 | 1.2.1.3.4.2 | Imagenes | 1h | 2015-04-23 15:30 | 2015-04-23 16:30 | 77 | 2015-04-23 10:30 | 2015-04-23 11:30 | 1h | 0d | Gabriel | 1h |
| 79 | 1.2.1.3.4.3 | Aceptar terminos y condiciones | 1h | 2015-04-23 16:30 | 2015-04-24 08:30 | 78 | 2015-04-23 11:30 | 2015-04-23 13:30 | 1h | 0d | Gabriel | 1h |
| 80 | 1.2.1.3.4.4 | Volver | 1h | 2015-04-24 08:30 | 2015-04-24 09:30 | 79 | 2015-04-23 13:30 | 2015-04-23 14:30 | 1h | 0d | Gabriel | 1h |
| 81 | 1.2.1.3.4.5 | Publicar | 1h | 2015-04-24 09:30 | 2015-04-24 10:30 | 80 | 2015-04-23 14:30 | 2015-04-23 15:30 | 1h | 0d | Gabriel | 1h |
| 82 | 1.2.1.3.4.6 | Pruebas unitarias | 2h | 2015-04-24 10:30 | 2015-04-24 13:30 | 81 | 2015-04-23 15:30 | 2015-04-24 08:30 | 2h | 0d | Gabriel | 2h |
| 83 | 1.2.1.3.5 | Ajustar Diseño | 6h | 2015-04-24 13:30 | 2015-04-27 10:30 | 76, 197 | 2015-04-24 08:30 | 2015-04-24 15:30 | 6h | 0d | Gabriel | 6h |
| 84 | 1.2.1.4 | **Listado de productos** | 2.22d | 2015-04-27 10:30 | 2015-04-29 15:30 | 51 | 2015-04-24 15:30 | 2015-04-29 10:30 | 2.22d | 0d |  | 20h |
| 85 | 1.2.1.4.1 | Listado de productos | 4h | 2015-04-27 10:30 | 2015-04-27 15:30 |  | 2015-04-24 15:30 | 2015-04-27 10:30 | 4h | 0d | Gabriel | 4h |
| 86 | 1.2.1.4.2 | Mejorar filtrado | 16h | 2015-04-27 15:30 | 2015-04-29 15:30 | 85 | 2015-04-27 10:30 | 2015-04-29 10:30 | 16h | 0d | Gabriel | 16h |
| 87 | 1.2.1.5 | **Detalle del Producto** | 2.78d | 2015-04-29 15:30 | 2015-05-05 16:30 | 84 | 2015-04-29 10:30 | 2015-05-05 11:30 | 2.78d | 0d |  | 25h |
| 88 | 1.2.1.5.1 | Revision de links y carga de info | 4h | 2015-04-29 15:30 | 2015-04-30 10:30 |  | 2015-04-29 10:30 | 2015-04-29 15:30 | 4h | 0d | Gabriel | 4h |
| 89 | 1.2.1.5.2 | Comprar y notificar | 3h | 2015-04-30 10:30 | 2015-04-30 14:30 | 88 | 2015-04-29 15:30 | 2015-04-30 09:30 | 3h | 0d | Gabriel | 3h |
| 90 | 1.2.1.5.3 | **Pestaña detalle de producto** | 0.67d | 2015-04-30 14:30 | 2015-05-04 11:30 | 89 | 2015-04-30 09:30 | 2015-04-30 16:30 | 0.67d | 0d |  | 6h |
| 91 | 1.2.1.5.3.1 | Cargar caracteristcas | 2h | 2015-04-30 14:30 | 2015-04-30 16:30 |  | 2015-04-30 09:30 | 2015-04-30 11:30 | 2h | 0d | Gabriel | 2h |
| 92 | 1.2.1.5.3.2 | Cargar HTML | 4h | 2015-04-30 16:30 | 2015-05-04 11:30 | 91 | 2015-04-30 11:30 | 2015-04-30 16:30 | 4h | 0d | Gabriel | 4h |
| 93 | 1.2.1.5.4 | **Pestaña reviews** | 0.22d | 2015-05-04 11:30 | 2015-05-04 14:30 | 90 | 2015-04-30 16:30 | 2015-05-04 09:30 | 0.22d | 0d |  | 2h |
| 94 | 1.2.1.5.4.1 | Cargar Reviews | 1h | 2015-05-04 11:30 | 2015-05-04 13:30 |  | 2015-04-30 16:30 | 2015-05-04 08:30 | 1h | 0d | Gabriel | 1h |
| 95 | 1.2.1.5.4.2 | Quitar parcialmente opcion de nuevo review | 1h | 2015-05-04 13:30 | 2015-05-04 14:30 | 94 | 2015-05-04 08:30 | 2015-05-04 09:30 | 1h | 0d | Gabriel | 1h |
| 96 | 1.2.1.5.5 | Quitar pestaña envios | 0.5h | 2015-05-04 14:30 | 2015-05-04 15:00 | 93 | 2015-05-04 09:30 | 2015-05-04 10:00 | 0.5h | 0d | Gabriel | 0.5h |
| 97 | 1.2.1.5.6 | Quitar pestaña price match | 0.5h | 2015-05-04 15:00 | 2015-05-04 15:30 | 96 | 2015-05-04 10:00 | 2015-05-04 10:30 | 0.5h | 0d | Gabriel | 0.5h |
| 98 | 1.2.1.5.7 | **Preguntas** | 1d | 2015-05-04 15:30 | 2015-05-05 16:30 | 97 | 2015-05-04 10:30 | 2015-05-05 11:30 | 1d | 0d |  | 9h |
| 99 | 1.2.1.5.7.1 | BD | 2h | 2015-05-04 15:30 | 2015-05-05 08:30 |  | 2015-05-04 10:30 | 2015-05-04 13:30 | 2h | 0d | Gabriel | 2h |
| 100 | 1.2.1.5.7.2 | Listar preguntas | 4h | 2015-05-05 08:30 | 2015-05-05 13:30 | 99 | 2015-05-04 13:30 | 2015-05-05 08:30 | 4h | 0d | Gabriel | 4h |
| 101 | 1.2.1.5.7.3 | Agregar preguntas | 3h | 2015-05-05 13:30 | 2015-05-05 16:30 | 100 | 2015-05-05 08:30 | 2015-05-05 11:30 | 3h | 0d | Gabriel | 3h |

| ID | WBS | Task | Duration | Start | Finish | Predecessors | Baseline start | Baseline finish | Baseline duration | Total slack | Resources | Work |
| --- | --- | --- | --- | --- | --- | --- | --- | --- | --- | --- | --- | --- |
| 102 | 1.2.1.6 | **Home** | 4.67d | 2015-05-05 16:30 | 2015-05-13 09:30 | 87 | 2015-05-05 11:30 | 2015-05-12 14:30 | 4.67d | 0d |  | 42h |
| 103 | 1.2.1.6.1 | Menu de categorias | 10h | 2015-05-05 16:30 | 2015-05-07 09:30 |  | 2015-05-05 11:30 | 2015-05-06 14:30 | 10h | 0d | Gabriel | 10h |
| 104 | 1.2.1.6.2 | Menu principal | 10h | 2015-05-07 09:30 | 2015-05-08 11:30 | 103 | 2015-05-06 14:30 | 2015-05-07 16:30 | 10h | 0d | Gabriel | 10h |
| 105 | 1.2.1.6.3 | Ajustes generales | 4h | 2015-05-08 11:30 | 2015-05-08 16:30 | 104 | 2015-05-07 16:30 | 2015-05-08 11:30 | 4h | 0d | Gabriel | 4h |
| 106 | 1.2.1.6.4 | Revision de Buscador | 10h | 2015-05-08 16:30 | 2015-05-12 09:30 | 105 | 2015-05-08 11:30 | 2015-05-11 14:30 | 10h | 0d | Gabriel | 10h |
| 107 | 1.2.1.6.5 | Eliminación funcionalidades innecesarias | 4h | 2015-05-12 09:30 | 2015-05-12 14:30 | 106 | 2015-05-11 14:30 | 2015-05-12 09:30 | 4h | 0d | Gabriel | 4h |
| 108 | 1.2.1.6.6 | Pruebas unitarias | 4h | 2015-05-12 14:30 | 2015-05-13 09:30 | 107 | 2015-05-12 09:30 | 2015-05-12 14:30 | 4h | 0d | Gabriel | 4h |
| 109 | 1.2.1.7 | **Registro** | 2.33d | 2015-05-13 09:30 | 2015-05-15 15:30 | 102 | 2015-05-12 14:30 | 2015-05-15 10:30 | 2.33d | 0d |  | 21h |
| 110 | 1.2.1.7.1 | Tipo persona | 3h | 2015-05-13 09:30 | 2015-05-13 13:30 |  | 2015-05-12 14:30 | 2015-05-13 08:30 | 3h | 0d | Gabriel | 3h |
| 111 | 1.2.1.7.2 | Datos basicos | 3h | 2015-05-13 13:30 | 2015-05-13 16:30 | 110 | 2015-05-13 08:30 | 2015-05-13 11:30 | 3h | 0d | Gabriel | 3h |
| 112 | 1.2.1.7.3 | Guardar datos | 3h | 2015-05-13 16:30 | 2015-05-14 10:30 | 111 | 2015-05-13 11:30 | 2015-05-13 15:30 | 3h | 0d | Gabriel | 3h |
| 113 | 1.2.1.7.4 | Enviar correo de confirmacion | 1h | 2015-05-14 10:30 | 2015-05-14 11:30 | 112 | 2015-05-13 15:30 | 2015-05-13 16:30 | 1h | 0d | Gabriel | 1h |
| 114 | 1.2.1.7.5 | Pruebas unitarias | 3h | 2015-05-14 11:30 | 2015-05-14 15:30 | 113 | 2015-05-13 16:30 | 2015-05-14 10:30 | 3h | 0d | Gabriel | 3h |
| 115 | 1.2.1.7.6 | **Registro rapido** | 0.89d | 2015-05-14 15:30 | 2015-05-15 15:30 | 114 | 2015-05-14 10:30 | 2015-05-15 10:30 | 0.89d | 0d |  | 8h |
| 116 | 1.2.1.7.6.1 | Creacion funcionalidad | 6h | 2015-05-14 15:30 | 2015-05-15 13:30 |  | 2015-05-14 10:30 | 2015-05-15 08:30 | 6h | 0d | Gabriel | 6h |
| 117 | 1.2.1.7.6.2 | Llamado en los sitios pendientes | 2h | 2015-05-15 13:30 | 2015-05-15 15:30 | 116 | 2015-05-15 08:30 | 2015-05-15 10:30 | 2h | 0d | Gabriel | 2h |
| 118 | 1.2.1.8 | **Autenticacion** | 1.33d | 2015-05-15 15:30 | 2015-05-20 10:30 | 109 | 2015-05-15 10:30 | 2015-05-19 15:30 | 1.33d | 0d |  | 12h |
| 119 | 1.2.1.8.1 | Datos basicos | 3h | 2015-05-15 15:30 | 2015-05-19 09:30 |  | 2015-05-15 10:30 | 2015-05-15 14:30 | 3h | 0d | Gabriel | 3h |
| 120 | 1.2.1.8.2 | Autenticacion | 2h | 2015-05-19 09:30 | 2015-05-19 11:30 | 119 | 2015-05-15 14:30 | 2015-05-15 16:30 | 2h | 0d | Gabriel | 2h |
| 121 | 1.2.1.8.3 | Pruebas unitarias | 2h | 2015-05-19 11:30 | 2015-05-19 14:30 | 120 | 2015-05-15 16:30 | 2015-05-19 09:30 | 2h | 0d | Gabriel | 2h |
| 122 | 1.2.1.8.4 | **Autenticacion Rapida** | 0.56d | 2015-05-19 14:30 | 2015-05-20 10:30 | 121 | 2015-05-19 09:30 | 2015-05-19 15:30 | 0.56d | 0d |  | 5h |
| 123 | 1.2.1.8.4.1 | Crear funcionalidad | 3h | 2015-05-19 14:30 | 2015-05-20 08:30 |  | 2015-05-19 09:30 | 2015-05-19 13:30 | 3h | 0d | Gabriel | 3h |
| 124 | 1.2.1.8.4.2 | Llamado en los sitios pendientes | 2h | 2015-05-20 08:30 | 2015-05-20 10:30 | 123 | 2015-05-19 13:30 | 2015-05-19 15:30 | 2h | 0d | Gabriel | 2h |
| 125 | 1.2.1.9 | **Recordar Clave** | 0.33d | 2015-05-20 10:30 | 2015-05-20 14:30 | 118 | 2015-05-19 15:30 | 2015-05-20 09:30 | 0.33d | 0d |  | 3h |
| 126 | 1.2.1.9.1 | Revisar funcionalidad | 2h | 2015-05-20 10:30 | 2015-05-20 13:30 |  | 2015-05-19 15:30 | 2015-05-20 08:30 | 2h | 0d | Gabriel | 2h |
| 127 | 1.2.1.9.2 | Enviar correo | 1h | 2015-05-20 13:30 | 2015-05-20 14:30 | 126 | 2015-05-20 08:30 | 2015-05-20 09:30 | 1h | 0d | Gabriel | 1h |

| ID | WBS | Task | Duration | Start | Finish | Predecessors | Baseline start | Baseline finish | Baseline duration | Total slack | Resources | Work |
| --- | --- | --- | --- | --- | --- | --- | --- | --- | --- | --- | --- | --- |
| 128 | 1.2.1.10 | **Detalle del Vendedor (Usuario)** | 2.44d | 2015-05-20 14:30 | 2015-05-25 11:30 | 125 | 2015-05-20 09:30 | 2015-05-22 16:30 | 2.44d | 0d |  | 22h |
| 129 | 1.2.1.10.1 | Acceso a datos | 4h | 2015-05-20 14:30 | 2015-05-21 09:30 |  | 2015-05-20 09:30 | 2015-05-20 14:30 | 4h | 0d | Gabriel | 4h |
| 130 | 1.2.1.10.2 | Informacion Básica | 3h | 2015-05-21 09:30 | 2015-05-21 13:30 | 129 | 2015-05-20 14:30 | 2015-05-21 08:30 | 3h | 0d | Gabriel | 3h |
| 131 | 1.2.1.10.3 | Comentarios Recibidos | 3h | 2015-05-21 13:30 | 2015-05-21 16:30 | 130 | 2015-05-21 08:30 | 2015-05-21 11:30 | 3h | 0d | Gabriel | 3h |
| 132 | 1.2.1.10.4 | Enviar mensaje prviado | 5h | 2015-05-21 16:30 | 2015-05-22 13:30 | 131 | 2015-05-21 11:30 | 2015-05-22 08:30 | 5h | 0d | Gabriel | 5h |
| 133 | 1.2.1.10.5 | Contar experiencia | 5h | 2015-05-22 13:30 | 2015-05-25 09:30 | 132 | 2015-05-22 08:30 | 2015-05-22 14:30 | 5h | 0d | Gabriel | 5h |
| 134 | 1.2.1.10.6 | Enviar correos de notificación | 2h | 2015-05-25 09:30 | 2015-05-25 11:30 | 133 | 2015-05-22 14:30 | 2015-05-22 16:30 | 2h | 0d | Gabriel | 2h |
| 135 | 1.2.1.11 | **Panel de Control** | 10.56d | 2015-05-25 11:30 | 2015-06-11 10:30 | 128 | 2015-05-22 16:30 | 2015-06-10 15:30 | 10.56d | 0d |  | 95h |
| 136 | 1.2.1.11.1 | Home Panel De Control | 6h | 2015-05-25 11:30 | 2015-05-26 09:30 |  | 2015-05-22 16:30 | 2015-05-25 14:30 | 6h | 0d | Gabriel | 6h |
| 137 | 1.2.1.11.2 | **Mis datos** | 1.89d | 2015-05-26 09:30 | 2015-05-28 10:30 | 136 | 2015-05-25 14:30 | 2015-05-27 15:30 | 1.89d | 0d |  | 17h |
| 138 | 1.2.1.11.2.1 | BD | 2h | 2015-05-26 09:30 | 2015-05-26 11:30 |  | 2015-05-25 14:30 | 2015-05-25 16:30 | 2h | 0d | Gabriel | 2h |
| 139 | 1.2.1.11.2.2 | Datos basicos | 3h | 2015-05-26 11:30 | 2015-05-26 15:30 | 138 | 2015-05-25 16:30 | 2015-05-26 10:30 | 3h | 0d | Gabriel | 3h |
| 140 | 1.2.1.11.2.3 | **Mi moto** | 0.56d | 2015-05-26 15:30 | 2015-05-27 11:30 | 139 | 2015-05-26 10:30 | 2015-05-26 16:30 | 0.56d | 0d |  | 5h |
| 141 | 1.2.1.11.2.3.1 | Seleccion de marca | 3h | 2015-05-26 15:30 | 2015-05-27 09:30 |  | 2015-05-26 10:30 | 2015-05-26 14:30 | 3h | 0d | Gabriel | 3h |
| 142 | 1.2.1.11.2.3.2 | Datos adicionales | 1h | 2015-05-27 09:30 | 2015-05-27 10:30 | 141 | 2015-05-26 14:30 | 2015-05-26 15:30 | 1h | 0d | Gabriel | 1h |
| 143 | 1.2.1.11.2.3.3 | Carga de logo | 1h | 2015-05-27 10:30 | 2015-05-27 11:30 | 142 | 2015-05-26 15:30 | 2015-05-26 16:30 | 1h | 0d | Gabriel | 1h |
| 144 | 1.2.1.11.2.4 | **Cambiar Clave** | 0.22d | 2015-05-27 11:30 | 2015-05-27 14:30 | 140 | 2015-05-26 16:30 | 2015-05-27 09:30 | 0.22d | 0d |  | 2h |
| 145 | 1.2.1.11.2.4.1 | Ajustar diseño | 1h | 2015-05-27 11:30 | 2015-05-27 13:30 |  | 2015-05-26 16:30 | 2015-05-27 08:30 | 1h | 0d | Gabriel | 1h |
| 146 | 1.2.1.11.2.4.2 | Retornar a edicion de datos | 1h | 2015-05-27 13:30 | 2015-05-27 14:30 | 145 | 2015-05-27 08:30 | 2015-05-27 09:30 | 1h | 0d | Gabriel | 1h |
| 147 | 1.2.1.11.2.5 | Guardar | 2h | 2015-05-27 14:30 | 2015-05-27 16:30 | 144 | 2015-05-27 09:30 | 2015-05-27 11:30 | 2h | 0d | Gabriel | 2h |
| 148 | 1.2.1.11.2.6 | Pruebas unitarias | 3h | 2015-05-27 16:30 | 2015-05-28 10:30 | 147 | 2015-05-27 11:30 | 2015-05-27 15:30 | 3h | 0d | Gabriel | 3h |
| 149 | 1.2.1.11.3 | **Mis productos** | 2d | 2015-05-28 10:30 | 2015-06-01 13:30 | 137 | 2015-05-27 15:30 | 2015-06-01 08:30 | 2d | 0d |  | 18h |
| 150 | 1.2.1.11.3.1 | Filtro de tipo de producto | 2h | 2015-05-28 10:30 | 2015-05-28 13:30 |  | 2015-05-27 15:30 | 2015-05-28 08:30 | 2h | 0d | Gabriel | 2h |
| 151 | 1.2.1.11.3.2 | Filtro estado | 2h | 2015-05-28 13:30 | 2015-05-28 15:30 | 150 | 2015-05-28 08:30 | 2015-05-28 10:30 | 2h | 0d | Gabriel | 2h |
| 152 | 1.2.1.11.3.3 | Listado de productos | 3h | 2015-05-28 15:30 | 2015-05-29 09:30 | 151 | 2015-05-28 10:30 | 2015-05-28 14:30 | 3h | 0d | Gabriel | 3h |
| 153 | 1.2.1.11.3.4 | Acceso a datos | 2h | 2015-05-29 09:30 | 2015-05-29 11:30 | 152 | 2015-05-28 14:30 | 2015-05-28 16:30 | 2h | 0d | Gabriel | 2h |

| ID | WBS | Task | Duration | Start | Finish | Predecessors | Baseline start | Baseline finish | Baseline duration | Total slack | Resources | Work |
| --- | --- | --- | --- | --- | --- | --- | --- | --- | --- | --- | --- | --- |
| 154 | 1.2.1.11.3.5 | **Responder preguntas** | 0.67d | 2015-05-29 11:30 | 2015-06-01 09:30 | 153 | 2015-05-28 16:30 | 2015-05-29 14:30 | 0.67d | 0d |  | 6h |
| 155 | 1.2.1.11.3.5.1 | Listado de preguntas | 3h | 2015-05-29 11:30 | 2015-05-29 15:30 |  | 2015-05-28 16:30 | 2015-05-29 10:30 | 3h | 0d | Gabriel | 3h |
| 156 | 1.2.1.11.3.5.2 | Guardado de datos | 2h | 2015-05-29 15:30 | 2015-06-01 08:30 | 155 | 2015-05-29 10:30 | 2015-05-29 13:30 | 2h | 0d | Gabriel | 2h |
| 157 | 1.2.1.11.3.5.3 | Enviar notificacion | 1h | 2015-06-01 08:30 | 2015-06-01 09:30 | 156 | 2015-05-29 13:30 | 2015-05-29 14:30 | 1h | 0d | Gabriel | 1h |
| 158 | 1.2.1.11.3.6 | Pruebas unitarias | 3h | 2015-06-01 09:30 | 2015-06-01 13:30 | 154 | 2015-05-29 14:30 | 2015-06-01 08:30 | 3h | 0d | Gabriel | 3h |
| 159 | 1.2.1.11.4 | **Mis ventas** | 1d | 2015-06-01 13:30 | 2015-06-02 14:30 | 149 | 2015-06-01 08:30 | 2015-06-02 09:30 | 1d | 0d |  | 9h |
| 160 | 1.2.1.11.4.1 | Listado de productos | 3h | 2015-06-01 13:30 | 2015-06-01 16:30 |  | 2015-06-01 08:30 | 2015-06-01 11:30 | 3h | 0d | Gabriel | 3h |
| 161 | 1.2.1.11.4.2 | Filtro | 2h | 2015-06-01 16:30 | 2015-06-02 09:30 | 160 | 2015-06-01 11:30 | 2015-06-01 14:30 | 2h | 0d | Gabriel | 2h |
| 162 | 1.2.1.11.4.3 | Acceso a datos | 2h | 2015-06-02 09:30 | 2015-06-02 11:30 | 161 | 2015-06-01 14:30 | 2015-06-01 16:30 | 2h | 0d | Gabriel | 2h |
| 163 | 1.2.1.11.4.4 | Pruebas unitarias | 2h | 2015-06-02 11:30 | 2015-06-02 14:30 | 162 | 2015-06-01 16:30 | 2015-06-02 09:30 | 2h | 0d | Gabriel | 2h |
| 164 | 1.2.1.11.5 | **Mis Compras** | 2.33d | 2015-06-02 14:30 | 2015-06-05 10:30 | 159 | 2015-06-02 09:30 | 2015-06-04 15:30 | 2.33d | 0d |  | 21h |
| 165 | 1.2.1.11.5.1 | Listado de productos | 4h | 2015-06-02 14:30 | 2015-06-03 09:30 |  | 2015-06-02 09:30 | 2015-06-02 14:30 | 4h | 0d | Gabriel | 4h |
| 166 | 1.2.1.11.5.2 | Filtros | 3h | 2015-06-03 09:30 | 2015-06-03 13:30 | 165 | 2015-06-02 14:30 | 2015-06-03 08:30 | 3h | 0d | Gabriel | 3h |
| 167 | 1.2.1.11.5.3 | Paginacion | 2h | 2015-06-03 13:30 | 2015-06-03 15:30 | 166 | 2015-06-03 08:30 | 2015-06-03 10:30 | 2h | 0d | Gabriel | 2h |
| 168 | 1.2.1.11.5.4 | BD | 2h | 2015-06-03 15:30 | 2015-06-04 08:30 | 167 | 2015-06-03 10:30 | 2015-06-03 13:30 | 2h | 0d | Gabriel | 2h |
| 169 | 1.2.1.11.5.5 | **Calificar** | 0.78d | 2015-06-04 08:30 | 2015-06-04 16:30 | 168 | 2015-06-03 13:30 | 2015-06-04 11:30 | 0.78d | 0d |  | 7h |
| 170 | 1.2.1.11.5.5.1 | Datos basicos | 2h | 2015-06-04 08:30 | 2015-06-04 10:30 |  | 2015-06-03 13:30 | 2015-06-03 15:30 | 2h | 0d | Gabriel | 2h |
| 171 | 1.2.1.11.5.5.2 | BD | 2h | 2015-06-04 10:30 | 2015-06-04 13:30 | 170 | 2015-06-03 15:30 | 2015-06-04 08:30 | 2h | 0d | Gabriel | 2h |
| 172 | 1.2.1.11.5.5.3 | Guardar | 2h | 2015-06-04 13:30 | 2015-06-04 15:30 | 171 | 2015-06-04 08:30 | 2015-06-04 10:30 | 2h | 0d | Gabriel | 2h |
| 173 | 1.2.1.11.5.5.4 | Volver a listado | 1h | 2015-06-04 15:30 | 2015-06-04 16:30 | 172 | 2015-06-04 10:30 | 2015-06-04 11:30 | 1h | 0d | Gabriel | 1h |
| 174 | 1.2.1.11.5.6 | Pruebas unitarias | 3h | 2015-06-04 16:30 | 2015-06-05 10:30 | 169 | 2015-06-04 11:30 | 2015-06-04 15:30 | 3h | 0d | Gabriel | 3h |
| 175 | 1.2.1.11.6 | **Mensajes Recibidos** | 1.67d | 2015-06-05 10:30 | 2015-06-10 09:30 | 164 | 2015-06-04 15:30 | 2015-06-09 14:30 | 1.67d | 0d |  | 15h |
| 176 | 1.2.1.11.6.1 | Listado de mensajes | 4h | 2015-06-05 10:30 | 2015-06-05 15:30 |  | 2015-06-04 15:30 | 2015-06-05 10:30 | 4h | 0d | Gabriel | 4h |
| 177 | 1.2.1.11.6.2 | Filtro | 2h | 2015-06-05 15:30 | 2015-06-09 08:30 | 176 | 2015-06-05 10:30 | 2015-06-05 13:30 | 2h | 0d | Gabriel | 2h |
| 178 | 1.2.1.11.6.3 | Cargar hilo de mensajes | 4h | 2015-06-09 08:30 | 2015-06-09 13:30 | 177 | 2015-06-05 13:30 | 2015-06-09 08:30 | 4h | 0d | Gabriel | 4h |
| 179 | 1.2.1.11.6.4 | Responder mensaje | 2h | 2015-06-09 13:30 | 2015-06-09 15:30 | 178 | 2015-06-09 08:30 | 2015-06-09 10:30 | 2h | 0d | Gabriel | 2h |
| 180 | 1.2.1.11.6.5 | Pruebas unitarias | 3h | 2015-06-09 15:30 | 2015-06-10 09:30 | 179 | 2015-06-09 10:30 | 2015-06-09 14:30 | 3h | 0d | Gabriel | 3h |
| 181 | 1.2.1.11.7 | Panel de notificaciones | 9h | 2015-06-10 09:30 | 2015-06-11 10:30 | 175 | 2015-06-09 14:30 | 2015-06-10 15:30 | 9h | 0d | Gabriel | 9h |
| 182 | 1.2.1.12 | Mapa del sitio | 2h | 2015-06-11 10:30 | 2015-06-11 13:30 | 135 | 2015-06-10 15:30 | 2015-06-11 08:30 | 2h | 0d | Gabriel | 2h |
| 183 | 1.2.1.13 | Condiciones de uso | 1h | 2015-06-11 13:30 | 2015-06-11 14:30 | 182 | 2015-06-11 08:30 | 2015-06-11 09:30 | 1h | 0d | Gabriel | 1h |
| 184 | 1.2.1.14 | Contacto | 4h | 2015-06-11 14:30 | 2015-06-12 09:30 | 183 | 2015-06-11 09:30 | 2015-06-11 14:30 | 4h | 0d | Gabriel | 4h |
| 185 | 1.2.1.15 | Acerca de nosotros | 2h | 2015-06-12 09:30 | 2015-06-12 11:30 | 184 | 2015-06-11 14:30 | 2015-06-11 16:30 | 2h | 0d | Gabriel | 2h |
| 186 | 1.2.1.16 | Ajustes adicionales | 27h | 2015-06-12 11:30 | 2015-06-18 15:30 | 185 | 2015-06-11 16:30 | 2015-06-18 10:30 | 27h | 0d | Gabriel | 27h |

| ID | WBS | Task | Duration | Start | Finish | Predecessors | Baseline start | Baseline finish | Baseline duration | Total slack | Free slack | Constraint | Resources | Work |
| --- | --- | --- | --- | --- | --- | --- | --- | --- | --- | --- | --- | --- | --- | --- |
| 187 | 1.2.2 | **Diseño Web** | 31.44d | 2015-03-27 08:00 | 2015-05-21 11:00 |  | 2015-03-27 15:30 | 2015-05-22 09:30 | 31.44d | 1.17d |  |  |  | 283h |
| 188 | 1.2.2.1 | Visuales | 9h | 2015-03-27 08:00 | 2015-03-30 09:00 |  | 2015-03-27 15:30 | 2015-03-30 16:30 | 9h | 1.17d | 0d | start no earlier than 2015-03-27 08:00 | Julian | 9h |
| 189 | 1.2.2.2 | Home | 9h | 2015-03-30 09:00 | 2015-03-31 10:00 | 188 | 2015-03-30 16:30 | 2015-04-01 08:30 | 9h | 1.17d | 0d | start no earlier than 2015-03-26 08:00 | Julian | 9h |
| 190 | 1.2.2.3 | **Panel de Control** | 16.44d | 2015-03-31 10:00 | 2015-04-28 15:00 | 189 | 2015-04-01 08:30 | 2015-04-29 13:30 | 16.44d | 1.17d | 0d |  |  | 148h |
| 191 | 1.2.2.3.1 | **Publicacion Producto** | 3.11d | 2015-04-08 10:00 | 2015-04-13 15:00 | 204 | 2015-04-09 08:30 | 2015-04-14 13:30 | 3.11d | 1.17d | 0d |  |  | 28h |
| 192 | 1.2.2.3.1.1 | Paso1 | 0.44d | 2015-04-08 10:00 | 2015-04-08 15:00 |  | 2015-04-09 08:30 | 2015-04-09 13:30 | 0.44d | 1.17d | 0d |  | Julian | 4h |
| 193 | 1.2.2.3.1.2 | Paso2 | 0.89d | 2015-04-08 15:00 | 2015-04-09 15:00 | 192 | 2015-04-09 13:30 | 2015-04-10 13:30 | 0.89d | 1.17d | 0d |  | Julian | 8h |
| 194 | 1.2.2.3.1.3 | Paso3 | 0.89d | 2015-04-09 15:00 | 2015-04-10 15:00 | 193 | 2015-04-10 13:30 | 2015-04-13 13:30 | 0.89d | 1.17d | 0d |  | Julian | 8h |
| 195 | 1.2.2.3.1.4 | Paso4 | 0.89d | 2015-04-10 15:00 | 2015-04-13 15:00 | 194 | 2015-04-13 13:30 | 2015-04-14 13:30 | 0.89d | 1.17d |  |  | Julian | 8h |
| 196 | 1.2.2.3.2 | Home Panel De Control | 0.89d | 2015-03-31 10:00 | 2015-04-01 10:00 |  | 2015-04-01 08:30 | 2015-04-06 08:30 | 0.89d | 1.17d | 0d |  | Julian | 8h |
| 197 | 1.2.2.3.3 | **Publicacion Moto** | 3.56d | 2015-04-13 15:00 | 2015-04-17 15:00 | 191 | 2015-04-14 13:30 | 2015-04-20 13:30 | 3.56d | 4.28d | 0d |  |  | 32h |
| 198 | 1.2.2.3.3.1 | Paso1 | 0.89d | 2015-04-13 15:00 | 2015-04-14 15:00 |  | 2015-04-14 13:30 | 2015-04-15 13:30 | 0.89d | 4.28d | 0d |  | Julian | 8h |
| 199 | 1.2.2.3.3.2 | Paso2 | 0.89d | 2015-04-14 15:00 | 2015-04-15 15:00 | 198 | 2015-04-15 13:30 | 2015-04-16 13:30 | 0.89d | 4.28d | 0d |  | Julian | 8h |
| 200 | 1.2.2.3.3.3 | Paso3 | 0.89d | 2015-04-15 15:00 | 2015-04-16 15:00 | 199 | 2015-04-16 13:30 | 2015-04-17 13:30 | 0.89d | 4.28d | 0d |  | Julian | 8h |
| 201 | 1.2.2.3.3.4 | Paso4 | 0.89d | 2015-04-16 15:00 | 2015-04-17 15:00 | 200 | 2015-04-17 13:30 | 2015-04-20 13:30 | 0.89d | 4.28d |  |  | Julian | 8h |
| 202 | 1.2.2.3.4 | Actualizacion de datos | 0.89d | 2015-04-01 10:00 | 2015-04-06 10:00 | 196 | 2015-04-06 08:30 | 2015-04-07 08:30 | 0.89d | 1.17d | 0d |  | Julian | 8h |
| 203 | 1.2.2.3.5 | Cambiar Clave | 0.89d | 2015-04-06 10:00 | 2015-04-07 10:00 | 202 | 2015-04-07 08:30 | 2015-04-08 08:30 | 0.89d | 1.17d | 0d |  | Julian | 8h |
| 204 | 1.2.2.3.6 | Seleccionar tipo de producto | 0.89d | 2015-04-07 10:00 | 2015-04-08 10:00 | 203 | 2015-04-08 08:30 | 2015-04-09 08:30 | 0.89d | 1.17d | 0d |  | Julian | 8h |
| 205 | 1.2.2.3.7 | Mensajes Recibidos | 0.89d | 2015-04-17 15:00 | 2015-04-20 15:00 | 197 | 2015-04-20 13:30 | 2015-04-21 13:30 | 0.89d | 22.39d | 0d |  | Julian | 8h |
| 206 | 1.2.2.3.8 | Mis Compras | 0.89d | 2015-04-20 15:00 | 2015-04-21 15:00 | 205 | 2015-04-21 13:30 | 2015-04-22 13:30 | 0.89d | 22.39d | 0d |  | Julian | 8h |
| 207 | 1.2.2.3.9 | Calificar | 0.89d | 2015-04-21 15:00 | 2015-04-22 15:00 | 206 | 2015-04-22 13:30 | 2015-04-23 13:30 | 0.89d | 22.39d | 0d |  | Julian | 8h |
| 208 | 1.2.2.3.10 | Mis Ventas | 0.89d | 2015-04-22 15:00 | 2015-04-23 15:00 | 207 | 2015-04-23 13:30 | 2015-04-24 13:30 | 0.89d | 22.39d | 0d |  | Julian | 8h |
| 209 | 1.2.2.3.11 | Mis Productos | 0.89d | 2015-04-23 15:00 | 2015-04-24 15:00 | 208 | 2015-04-24 13:30 | 2015-04-27 13:30 | 0.89d | 22.39d | 0d |  | Julian | 8h |
| 210 | 1.2.2.3.12 | Responder Preguntas | 0.89d | 2015-04-24 15:00 | 2015-04-27 15:00 | 209 | 2015-04-27 13:30 | 2015-04-28 13:30 | 0.89d | 22.39d | 0d |  | Julian | 8h |
| 211 | 1.2.2.3.13 | Mis Datos | 0.89d | 2015-04-27 15:00 | 2015-04-28 15:00 | 210 | 2015-04-28 13:30 | 2015-04-29 13:30 | 0.89d | 22.39d |  |  | Julian | 8h |
| 212 | 1.2.2.4 | Registro | 9h | 2015-04-28 15:00 | 2015-04-29 16:00 | 190 | 2015-04-29 13:30 | 2015-04-30 14:30 | 9h | 22.39d | 0d |  | Julian | 9h |
| 213 | 1.2.2.5 | Autenticacion | 9h | 2015-04-29 16:00 | 2015-04-30 17:00 | 212 | 2015-04-30 14:30 | 2015-05-04 15:30 | 9h | 22.39d | 0d |  | Julian | 9h |
| 214 | 1.2.2.6 | Recordar Clave | 9h | 2015-05-04 08:00 | 2015-05-05 09:00 | 213 | 2015-05-04 15:30 | 2015-05-05 16:30 | 9h | 22.39d | 0d |  | Julian | 9h |
| 215 | 1.2.2.7 | Listado de productos | 9h | 2015-05-05 09:00 | 2015-05-06 10:00 | 214 | 2015-05-05 16:30 | 2015-05-07 08:30 | 9h | 22.39d | 0d |  | Julian | 9h |
| 216 | 1.2.2.8 | Detalle del producto | 1d | 2015-05-06 10:00 | 2015-05-07 11:00 | 215 | 2015-05-07 08:30 | 2015-05-08 09:30 | 1d | 22.39d | 0d |  | Julian | 9h |
| 217 | 1.2.2.9 | Detalle vendedor usuario | 1d | 2015-05-07 11:00 | 2015-05-08 12:00 | 216 | 2015-05-08 09:30 | 2015-05-11 10:30 | 1d | 22.39d | 0d |  | Julian | 9h |
| 218 | 1.2.2.10 | Preguntar a Vendedor | 1d | 2015-05-08 13:00 | 2015-05-11 14:00 | 217 | 2015-05-11 10:30 | 2015-05-12 11:30 | 1d | 22.39d | 0d |  | Julian | 9h |
| 219 | 1.2.2.11 | Panel de notificaciones | 1d | 2015-05-11 14:00 | 2015-05-12 15:00 | 218 | 2015-05-12 11:30 | 2015-05-13 13:30 | 1d | 22.39d | 0d |  | Julian | 9h |
| 220 | 1.2.2.12 | Newsletter | 1d | 2015-05-12 15:00 | 2015-05-13 16:00 | 219 | 2015-05-13 13:30 | 2015-05-14 14:30 | 1d | 22.39d | 0d |  | Julian | 9h |
| 221 | 1.2.2.13 | Mapa del sitio | 1d | 2015-05-13 16:00 | 2015-05-14 17:00 | 220 | 2015-05-14 14:30 | 2015-05-15 15:30 | 1d | 22.39d | 0d |  | Julian | 9h |
| 222 | 1.2.2.14 | Condiciones de uso | 1d | 2015-05-15 08:00 | 2015-05-19 09:00 | 221 | 2015-05-15 15:30 | 2015-05-19 16:30 | 1d | 22.39d | 0d |  | Julian | 9h |
| 223 | 1.2.2.15 | Contacto | 1d | 2015-05-19 09:00 | 2015-05-20 10:00 | 222 | 2015-05-19 16:30 | 2015-05-21 08:30 | 1d | 22.39d | 0d |  | Julian | 9h |
| 224 | 1.2.2.16 | Acerca de nosotros | 1d | 2015-05-20 10:00 | 2015-05-21 11:00 | 223 | 2015-05-21 08:30 | 2015-05-22 09:30 | 1d | 22.39d |  |  | Julian | 9h |

| ID | WBS | Task | Duration | Start | Finish | Predecessors | Baseline start | Baseline finish | Baseline duration | Total slack | Resources | Work |
| --- | --- | --- | --- | --- | --- | --- | --- | --- | --- | --- | --- | --- |
| 225 | 1.2.3 | **Pruebas** | 9d | 2015-06-12 11:30 | 2015-06-30 13:30 |  | 2015-06-11 16:30 | 2015-06-30 08:30 | 9d | 0d |  | 81h |
| 226 | 1.2.3.1 | Pruebas Generales | 3d | 2015-06-12 11:30 | 2015-06-18 15:30 | 185 | 2015-06-11 16:30 | 2015-06-18 10:30 | 3d | 6d | Julian | 27h |
| 227 | 1.2.3.2 | Correciones | 3d | 2015-06-18 15:30 | 2015-06-24 09:30 | 186 | 2015-06-18 10:30 | 2015-06-23 14:30 | 3d | 0d | Gabriel | 27h |
| 228 | 1.2.3.3 | Primeras visitas cliente | 3d | 2015-06-24 09:30 | 2015-06-30 13:30 | 227 | 2015-06-23 14:30 | 2015-06-30 08:30 | 3d | 0d | Gabriel | 27h |
| 229 | 1.3 | **Fase 2 (Tienda)** | 14.33d | 2015-06-30 13:30 | 2015-07-23 14:30 | 11 | 2015-06-30 08:30 | 2015-07-23 09:30 | 14.33d | 0d |  | 153h |
| 230 | 1.3.1 | **Desarrollo** | 9d | 2015-06-30 13:30 | 2015-07-14 14:30 |  | 2015-06-30 08:30 | 2015-07-14 09:30 | 9d | 0d |  | 81h |
| 231 | 1.3.1.1 | **Categorias** | 0.67d | 2015-06-30 13:30 | 2015-07-01 10:30 |  | 2015-06-30 08:30 | 2015-06-30 15:30 | 0.67d | 0d |  | 6h |
| 232 | 1.3.1.1.1 | Revision de funcionalidad correcta | 3h | 2015-06-30 13:30 | 2015-06-30 16:30 |  | 2015-06-30 08:30 | 2015-06-30 11:30 | 3h | 0d | Gabriel | 3h |
| 233 | 1.3.1.1.2 | Pruebas unitarias | 3h | 2015-06-30 16:30 | 2015-07-01 10:30 | 232 | 2015-06-30 11:30 | 2015-06-30 15:30 | 3h | 0d | Gabriel | 3h |
| 234 | 1.3.1.2 | **Actualizacion de Tienda** | 4.89d | 2015-07-01 10:30 | 2015-07-08 15:30 | 231 | 2015-06-30 15:30 | 2015-07-08 10:30 | 4.89d | 0d |  | 44h |
| 235 | 1.3.1.2.1 | BD | 2h | 2015-07-01 10:30 | 2015-07-01 13:30 |  | 2015-06-30 15:30 | 2015-07-01 08:30 | 2h | 0d | Gabriel | 2h |
| 236 | 1.3.1.2.2 | Datos basicos | 2h | 2015-07-01 13:30 | 2015-07-01 15:30 | 235 | 2015-07-01 08:30 | 2015-07-01 10:30 | 2h | 0d | Gabriel | 2h |
| 237 | 1.3.1.2.3 | Cargar logo | 3h | 2015-07-01 15:30 | 2015-07-02 09:30 | 236 | 2015-07-01 10:30 | 2015-07-01 14:30 | 3h | 0d | Gabriel | 3h |
| 238 | 1.3.1.2.4 | Cargar fondo | 2h | 2015-07-02 09:30 | 2015-07-02 11:30 | 237 | 2015-07-01 14:30 | 2015-07-01 16:30 | 2h | 0d | Gabriel | 2h |
| 239 | 1.3.1.2.5 | Servicios especializados | 6h | 2015-07-02 11:30 | 2015-07-03 09:30 | 238 | 2015-07-01 16:30 | 2015-07-02 14:30 | 6h | 0d | Gabriel | 6h |
| 240 | 1.3.1.2.6 | Recibir cotizaciones de | 2h | 2015-07-03 09:30 | 2015-07-03 11:30 | 239 | 2015-07-02 14:30 | 2015-07-02 16:30 | 2h | 0d | Gabriel | 2h |
| 241 | 1.3.1.2.7 | Referencias especializadas | 4h | 2015-07-03 11:30 | 2015-07-03 16:30 | 240 | 2015-07-02 16:30 | 2015-07-03 11:30 | 4h | 0d | Gabriel | 4h |
| 242 | 1.3.1.2.8 | **Imagenes Adicionales** | 0.78d | 2015-07-03 16:30 | 2015-07-06 15:30 | 241 | 2015-07-03 11:30 | 2015-07-06 10:30 | 0.78d | 0d |  | 7h |
| 243 | 1.3.1.2.8.1 | Agregar | 4h | 2015-07-03 16:30 | 2015-07-06 11:30 |  | 2015-07-03 11:30 | 2015-07-03 16:30 | 4h | 0d | Gabriel | 4h |
| 244 | 1.3.1.2.8.2 | Eliminar | 1h | 2015-07-06 11:30 | 2015-07-06 13:30 | 243 | 2015-07-03 16:30 | 2015-07-06 08:30 | 1h | 0d | Gabriel | 1h |
| 245 | 1.3.1.2.8.3 | Cambiar | 2h | 2015-07-06 13:30 | 2015-07-06 15:30 | 244 | 2015-07-06 08:30 | 2015-07-06 10:30 | 2h | 0d | Gabriel | 2h |
| 246 | 1.3.1.2.9 | **Sedes** | 1.78d | 2015-07-06 15:30 | 2015-07-08 15:30 | 242 | 2015-07-06 10:30 | 2015-07-08 10:30 | 1.78d | 0d |  | 16h |
| 247 | 1.3.1.2.9.1 | BD | 3h | 2015-07-06 15:30 | 2015-07-07 09:30 |  | 2015-07-06 10:30 | 2015-07-06 14:30 | 3h | 0d | Gabriel | 3h |
| 248 | 1.3.1.2.9.2 | Listar | 2h | 2015-07-07 09:30 | 2015-07-07 11:30 | 247 | 2015-07-06 14:30 | 2015-07-06 16:30 | 2h | 0d | Gabriel | 2h |
| 249 | 1.3.1.2.9.3 | Crear | 4h | 2015-07-07 11:30 | 2015-07-07 16:30 | 248 | 2015-07-06 16:30 | 2015-07-07 11:30 | 4h | 0d | Gabriel | 4h |
| 250 | 1.3.1.2.9.4 | Editar | 2h | 2015-07-07 16:30 | 2015-07-08 09:30 | 249 | 2015-07-07 11:30 | 2015-07-07 14:30 | 2h | 0d | Gabriel | 2h |
| 251 | 1.3.1.2.9.5 | Eliminar | 1h | 2015-07-08 09:30 | 2015-07-08 10:30 | 250 | 2015-07-07 14:30 | 2015-07-07 15:30 | 1h | 0d | Gabriel | 1h |
| 252 | 1.3.1.2.9.6 | Ubicar en mapa | 4h | 2015-07-08 10:30 | 2015-07-08 15:30 | 251 | 2015-07-07 15:30 | 2015-07-08 10:30 | 4h | 0d | Gabriel | 4h |

| ID | WBS | Task | Duration | Start | Finish | Predecessors | Baseline start | Baseline finish | Baseline duration | Total slack | Free slack | Resources | Work |
| --- | --- | --- | --- | --- | --- | --- | --- | --- | --- | --- | --- | --- | --- |
| 253 | 1.3.1.3 | **Detalle Tienda** | 3.44d | 2015-07-08 15:30 | 2015-07-14 14:30 | 234 | 2015-07-08 10:30 | 2015-07-14 09:30 | 3.44d | 0d |  |  | 31h |
| 254 | 1.3.1.3.1 | Fondo de tienda | 2h | 2015-07-08 15:30 | 2015-07-09 08:30 |  | 2015-07-08 10:30 | 2015-07-08 13:30 | 2h | 0d |  | Gabriel | 2h |
| 255 | 1.3.1.3.2 | Imagenes adicionales | 5h | 2015-07-09 08:30 | 2015-07-09 14:30 | 254 | 2015-07-08 13:30 | 2015-07-09 09:30 | 5h | 0d |  | Gabriel | 5h |
| 256 | 1.3.1.3.3 | Informacion básica | 2h | 2015-07-09 14:30 | 2015-07-09 16:30 | 255 | 2015-07-09 09:30 | 2015-07-09 11:30 | 2h | 0d |  | Gabriel | 2h |
| 257 | 1.3.1.3.4 | Enviar mensaje privado | 1h | 2015-07-09 16:30 | 2015-07-10 08:30 | 256 | 2015-07-09 11:30 | 2015-07-09 13:30 | 1h | 0d |  | Gabriel | 1h |
| 258 | 1.3.1.3.5 | Contar experiencia | 1h | 2015-07-10 08:30 | 2015-07-10 09:30 | 257 | 2015-07-09 13:30 | 2015-07-09 14:30 | 1h | 0d |  | Gabriel | 1h |
| 259 | 1.3.1.3.6 | **Listado de productos** | 0.89d | 2015-07-10 09:30 | 2015-07-13 09:30 | 258 | 2015-07-09 14:30 | 2015-07-10 14:30 | 0.89d | 0d |  |  | 8h |
| 260 | 1.3.1.3.6.1 | Listar productos | 4h | 2015-07-10 09:30 | 2015-07-10 14:30 |  | 2015-07-09 14:30 | 2015-07-10 09:30 | 4h | 0d |  | Gabriel | 4h |
| 261 | 1.3.1.3.6.2 | Filtrar Productos | 3h | 2015-07-10 14:30 | 2015-07-13 08:30 | 260 | 2015-07-10 09:30 | 2015-07-10 13:30 | 3h | 0d |  | Gabriel | 3h |
| 262 | 1.3.1.3.6.3 | Paginar productos | 1h | 2015-07-13 08:30 | 2015-07-13 09:30 | 261 | 2015-07-10 13:30 | 2015-07-10 14:30 | 1h | 0d |  | Gabriel | 1h |
| 263 | 1.3.1.3.7 | Listar comentarios | 3h | 2015-07-13 09:30 | 2015-07-13 13:30 | 259 | 2015-07-10 14:30 | 2015-07-13 08:30 | 3h | 0d |  | Gabriel | 3h |
| 264 | 1.3.1.3.8 | **Mapas** | 1d | 2015-07-13 13:30 | 2015-07-14 14:30 | 263 | 2015-07-13 08:30 | 2015-07-14 09:30 | 1d | 0d |  |  | 9h |
| 265 | 1.3.1.3.8.1 | Mostrar sedes | 4h | 2015-07-13 13:30 | 2015-07-14 08:30 |  | 2015-07-13 08:30 | 2015-07-13 13:30 | 4h | 0d |  | Gabriel | 4h |
| 266 | 1.3.1.3.8.2 | Informacion básica | 1h | 2015-07-14 08:30 | 2015-07-14 09:30 | 265 | 2015-07-13 13:30 | 2015-07-13 14:30 | 1h | 0d |  | Gabriel | 1h |
| 267 | 1.3.1.3.8.3 | Ubicar punto | 4h | 2015-07-14 09:30 | 2015-07-14 14:30 | 266 | 2015-07-13 14:30 | 2015-07-14 09:30 | 4h | 0d |  | Gabriel | 4h |
| 268 | 1.3.2 | **Diseño Web** | 2.67d | 2015-06-30 13:30 | 2015-07-03 13:30 | 187 | 2015-06-30 08:30 | 2015-07-03 08:30 | 2.67d | 11.67d |  |  | 24h |
| 269 | 1.3.2.1 | Categorias | 0.89d | 2015-06-30 13:30 | 2015-07-01 13:30 |  | 2015-06-30 08:30 | 2015-07-01 08:30 | 0.89d | 11.67d | 0d | Julian | 8h |
| 270 | 1.3.2.2 | Detalle Tienda | 0.89d | 2015-07-01 13:30 | 2015-07-02 13:30 | 269 | 2015-07-01 08:30 | 2015-07-02 08:30 | 0.89d | 11.67d | 0d | Julian | 8h |
| 271 | 1.3.2.3 | Actualizacion de Tienda | 0.89d | 2015-07-02 13:30 | 2015-07-03 13:30 | 270 | 2015-07-02 08:30 | 2015-07-03 08:30 | 0.89d | 11.67d |  | Julian | 8h |
| 272 | 1.3.3 | Pruebas Generales | 2.67d | 2015-07-14 14:30 | 2015-07-17 14:30 | 230 | 2015-07-14 09:30 | 2015-07-17 09:30 | 2.67d | 0d |  | Julian | 24h |
| 273 | 1.3.4 | Correciones | 2.67d | 2015-07-17 14:30 | 2015-07-23 14:30 | 272 | 2015-07-17 09:30 | 2015-07-23 09:30 | 2.67d | 0d |  | Gabriel | 24h |
| 274 | 1.4 | **Fase 3 (Cotizaciones)** | 20.17d | 2015-07-23 14:30 | 2015-08-27 11:00 | 229 | 2015-07-23 09:30 | 2015-08-26 16:00 | 20.17d | 0d |  |  | 245.5h |
| 275 | 1.4.1 | **Desarrollo** | 14.83d | 2015-07-23 14:30 | 2015-08-19 11:00 |  | 2015-07-23 09:30 | 2015-08-18 16:00 | 14.83d | 0d |  |  | 133.5h |
| 276 | 1.4.1.1 | **Publicacion Producto** | 5d | 2015-07-23 14:30 | 2015-07-31 10:30 |  | 2015-07-23 09:30 | 2015-07-30 15:30 | 5d | 0d |  |  | 45h |
| 277 | 1.4.1.1.1 | **Paso1 (Seleccionar Categoria)** | 1.44d | 2015-07-23 14:30 | 2015-07-27 10:30 |  | 2015-07-23 09:30 | 2015-07-24 15:30 | 1.44d | 0d |  |  | 13h |
| 278 | 1.4.1.1.1.1 | Ajustes de BD | 3h | 2015-07-23 14:30 | 2015-07-24 08:30 |  | 2015-07-23 09:30 | 2015-07-23 13:30 | 3h | 0d |  | Gabriel | 3h |
| 279 | 1.4.1.1.1.2 | Menú Superior Tipo Producto | 1h | 2015-07-24 08:30 | 2015-07-24 09:30 | 278 | 2015-07-23 13:30 | 2015-07-23 14:30 | 1h | 0d |  | Gabriel | 1h |
| 280 | 1.4.1.1.1.3 | Paso actual en el proceso | 1h | 2015-07-24 09:30 | 2015-07-24 10:30 | 279 | 2015-07-23 14:30 | 2015-07-23 15:30 | 1h | 0d |  | Gabriel | 1h |

| ID | WBS | Task | Duration | Start | Finish | Predecessors | Baseline start | Baseline finish | Baseline duration | Total slack | Resources | Work |
| --- | --- | --- | --- | --- | --- | --- | --- | --- | --- | --- | --- | --- |
| 281 | 1.4.1.1.1.4 | **Seleccion de Categorias** | 0.67d | 2015-07-24 10:30 | 2015-07-27 08:30 | 280 | 2015-07-23 15:30 | 2015-07-24 13:30 | 0.67d | 0d |  | 6h |
| 282 | 1.4.1.1.1.4.1 | Acceso a Datos | 1h | 2015-07-24 10:30 | 2015-07-24 11:30 |  | 2015-07-23 15:30 | 2015-07-23 16:30 | 1h | 0d | Gabriel | 1h |
| 283 | 1.4.1.1.1.4.2 | Filtro por seleccion | 2h | 2015-07-24 11:30 | 2015-07-24 14:30 | 282 | 2015-07-23 16:30 | 2015-07-24 09:30 | 2h | 0d | Gabriel | 2h |
| 284 | 1.4.1.1.1.4.3 | Filtro por texto | 1h | 2015-07-24 14:30 | 2015-07-24 15:30 | 283 | 2015-07-24 09:30 | 2015-07-24 10:30 | 1h | 0d | Gabriel | 1h |
| 285 | 1.4.1.1.1.4.4 | Ultimo seleccionado | 1h | 2015-07-24 15:30 | 2015-07-24 16:30 | 284 | 2015-07-24 10:30 | 2015-07-24 11:30 | 1h | 0d | Gabriel | 1h |
| 286 | 1.4.1.1.1.4.5 | Guardar | 1h | 2015-07-24 16:30 | 2015-07-27 08:30 | 285 | 2015-07-24 11:30 | 2015-07-24 13:30 | 1h | 0d | Gabriel | 1h |
| 287 | 1.4.1.1.1.5 | Pruebas Unitarias | 2h | 2015-07-27 08:30 | 2015-07-27 10:30 | 281 | 2015-07-24 13:30 | 2015-07-24 15:30 | 2h | 0d | Gabriel | 2h |
| 288 | 1.4.1.1.2 | **Paso2 (Detalle Producto)** | 2.56d | 2015-07-27 10:30 | 2015-07-30 09:30 | 277 | 2015-07-24 15:30 | 2015-07-29 14:30 | 2.56d | 0d |  | 23h |
| 289 | 1.4.1.1.2.1 | Acceso a datos | 4h | 2015-07-27 10:30 | 2015-07-27 15:30 |  | 2015-07-24 15:30 | 2015-07-27 10:30 | 4h | 0d | Gabriel | 4h |
| 290 | 1.4.1.1.2.2 | Datos básicos producto | 2h | 2015-07-27 15:30 | 2015-07-28 08:30 | 289 | 2015-07-27 10:30 | 2015-07-27 13:30 | 2h | 0d | Gabriel | 2h |
| 291 | 1.4.1.1.2.3 | Seleccionar tipo de moto | 3h | 2015-07-28 08:30 | 2015-07-28 11:30 | 290 | 2015-07-27 13:30 | 2015-07-27 16:30 | 3h | 0d | Gabriel | 3h |
| 292 | 1.4.1.1.2.4 | Datos de domicilio | 4h | 2015-07-28 11:30 | 2015-07-28 16:30 | 291 | 2015-07-27 16:30 | 2015-07-28 11:30 | 4h | 0d | Gabriel | 4h |
| 293 | 1.4.1.1.2.5 | Insumos | 4h | 2015-07-28 16:30 | 2015-07-29 11:30 | 292 | 2015-07-28 11:30 | 2015-07-28 16:30 | 4h | 0d | Gabriel | 4h |
| 294 | 1.4.1.1.2.6 | Editor HTML | 2h | 2015-07-29 11:30 | 2015-07-29 14:30 | 291, 293 | 2015-07-28 16:30 | 2015-07-29 09:30 | 2h | 0d | Gabriel | 2h |
| 295 | 1.4.1.1.2.7 | Guardar | 1h | 2015-07-29 14:30 | 2015-07-29 15:30 | 294 | 2015-07-29 09:30 | 2015-07-29 10:30 | 1h | 0d | Gabriel | 1h |
| 296 | 1.4.1.1.2.8 | Pruebas unitarias | 3h | 2015-07-29 15:30 | 2015-07-30 09:30 | 295 | 2015-07-29 10:30 | 2015-07-29 14:30 | 3h | 0d | Gabriel | 3h |
| 297 | 1.4.1.1.3 | **Paso 3 (Resumen)** | 1d | 2015-07-30 09:30 | 2015-07-31 10:30 | 288 | 2015-07-29 14:30 | 2015-07-30 15:30 | 1d | 0d |  | 9h |
| 298 | 1.4.1.1.3.1 | Datos basicos | 2h | 2015-07-30 09:30 | 2015-07-30 11:30 |  | 2015-07-29 14:30 | 2015-07-29 16:30 | 2h | 0d | Gabriel | 2h |
| 299 | 1.4.1.1.3.2 | Imagenes | 2h | 2015-07-30 11:30 | 2015-07-30 14:30 | 298 | 2015-07-29 16:30 | 2015-07-30 09:30 | 2h | 0d | Gabriel | 2h |
| 300 | 1.4.1.1.3.3 | Aceptar terminos y condiciones | 1h | 2015-07-30 14:30 | 2015-07-30 15:30 | 299 | 2015-07-30 09:30 | 2015-07-30 10:30 | 1h | 0d | Gabriel | 1h |
| 301 | 1.4.1.1.3.4 | Volver | 1h | 2015-07-30 15:30 | 2015-07-30 16:30 | 300 | 2015-07-30 10:30 | 2015-07-30 11:30 | 1h | 0d | Gabriel | 1h |
| 302 | 1.4.1.1.3.5 | Publicar | 1h | 2015-07-30 16:30 | 2015-07-31 08:30 | 301 | 2015-07-30 11:30 | 2015-07-30 13:30 | 1h | 0d | Gabriel | 1h |
| 303 | 1.4.1.1.3.6 | Pruebas unitarias | 2h | 2015-07-31 08:30 | 2015-07-31 10:30 | 302 | 2015-07-30 13:30 | 2015-07-30 15:30 | 2h | 0d | Gabriel | 2h |
| 304 | 1.4.1.2 | **Publicar Cotizacion** | 2.17d | 2015-07-31 10:30 | 2015-08-04 15:00 | 276 | 2015-07-30 15:30 | 2015-08-04 10:00 | 2.17d | 0d |  | 19.5h |
| 305 | 1.4.1.2.1 | BD | 3h | 2015-07-31 10:30 | 2015-07-31 14:30 |  | 2015-07-30 15:30 | 2015-07-31 09:30 | 3h | 0d | Gabriel | 3h |
| 306 | 1.4.1.2.2 | Datos basicos | 3h | 2015-07-31 14:30 | 2015-08-03 08:30 | 305 | 2015-07-31 09:30 | 2015-07-31 13:30 | 3h | 0d | Gabriel | 3h |
| 307 | 1.4.1.2.3 | Cambiar ubicacion | 2h | 2015-08-03 08:30 | 2015-08-03 10:30 | 306 | 2015-07-31 13:30 | 2015-07-31 15:30 | 2h | 0d | Gabriel | 2h |
| 308 | 1.4.1.2.4 | Cambiar moto | 3h | 2015-08-03 10:30 | 2015-08-03 14:30 | 307 | 2015-07-31 15:30 | 2015-08-03 09:30 | 3h | 0d | Gabriel | 3h |
| 309 | 1.4.1.2.5 | Cargar posibles problemas | 4h | 2015-08-03 14:30 | 2015-08-04 09:30 | 308 | 2015-08-03 09:30 | 2015-08-03 14:30 | 4h | 0d | Gabriel | 4h |
| 310 | 1.4.1.2.6 | Cargar imagenes | 1.5h | 2015-08-04 09:30 | 2015-08-04 11:00 | 309 | 2015-08-03 14:30 | 2015-08-03 16:00 | 1.5h | 0d | Gabriel | 1.5h |
| 311 | 1.4.1.2.7 | Pruebas unitarias | 3h | 2015-08-04 11:00 | 2015-08-04 15:00 | 310 | 2015-08-03 16:00 | 2015-08-04 10:00 | 3h | 0d | Gabriel | 3h |

| ID | WBS | Task | Duration | Start | Finish | Predecessors | Baseline start | Baseline finish | Baseline duration | Total slack | Resources | Work |
| --- | --- | --- | --- | --- | --- | --- | --- | --- | --- | --- | --- | --- |
| 312 | 1.4.1.3 | **Mis Cotizaciones (Taller)** | 1.89d | 2015-08-04 15:00 | 2015-08-06 16:00 | 304 | 2015-08-04 10:00 | 2015-08-06 11:00 | 1.89d | 0d |  | 17h |
| 313 | 1.4.1.3.1 | Mostrar indicadores | 3h | 2015-08-04 15:00 | 2015-08-05 09:00 |  | 2015-08-04 10:00 | 2015-08-04 14:00 | 3h | 0d | Gabriel | 3h |
| 314 | 1.4.1.3.2 | Cargar filtros | 5h | 2015-08-05 09:00 | 2015-08-05 15:00 | 313 | 2015-08-04 14:00 | 2015-08-05 10:00 | 5h | 0d | Gabriel | 5h |
| 315 | 1.4.1.3.3 | Listado de cotizaciones | 3h | 2015-08-05 15:00 | 2015-08-06 09:00 | 314 | 2015-08-05 10:00 | 2015-08-05 14:00 | 3h | 0d | Gabriel | 3h |
| 316 | 1.4.1.3.4 | Paginacion | 2h | 2015-08-06 09:00 | 2015-08-06 11:00 | 315 | 2015-08-05 14:00 | 2015-08-05 16:00 | 2h | 0d | Gabriel | 2h |
| 317 | 1.4.1.3.5 | BD | 2h | 2015-08-06 11:00 | 2015-08-06 14:00 | 316 | 2015-08-05 16:00 | 2015-08-06 09:00 | 2h | 0d | Gabriel | 2h |
| 318 | 1.4.1.3.6 | Pruebas unitarias | 2h | 2015-08-06 14:00 | 2015-08-06 16:00 | 317 | 2015-08-06 09:00 | 2015-08-06 11:00 | 2h | 0d | Gabriel | 2h |
| 319 | 1.4.1.4 | **Detalle Cotizacion(Taller)** | 2d | 2015-08-06 16:00 | 2015-08-12 09:00 | 312 | 2015-08-06 11:00 | 2015-08-11 14:00 | 2d | 0d |  | 18h |
| 320 | 1.4.1.4.1 | BD | 3h | 2015-08-06 16:00 | 2015-08-10 10:00 |  | 2015-08-06 11:00 | 2015-08-06 15:00 | 3h | 0d | Gabriel | 3h |
| 321 | 1.4.1.4.2 | Indicadores | 2h | 2015-08-10 10:00 | 2015-08-10 12:00 | 320 | 2015-08-06 15:00 | 2015-08-06 17:00 | 2h | 0d | Gabriel | 2h |
| 322 | 1.4.1.4.3 | Informacion de la solciitud | 3h | 2015-08-10 13:00 | 2015-08-10 16:00 | 321 | 2015-08-10 08:00 | 2015-08-10 11:00 | 3h | 0d | Gabriel | 3h |
| 323 | 1.4.1.4.4 | Imagenes | 2h | 2015-08-10 16:00 | 2015-08-11 09:00 | 322 | 2015-08-10 11:00 | 2015-08-10 14:00 | 2h | 0d | Gabriel | 2h |
| 324 | 1.4.1.4.5 | **Propuesta** | 0.44d | 2015-08-11 09:00 | 2015-08-11 14:00 | 323 | 2015-08-10 14:00 | 2015-08-11 09:00 | 0.44d | 0d |  | 4h |
| 325 | 1.4.1.4.5.1 | Datos basicos | 1h | 2015-08-11 09:00 | 2015-08-11 10:00 |  | 2015-08-10 14:00 | 2015-08-10 15:00 | 1h | 0d | Gabriel | 1h |
| 326 | 1.4.1.4.5.2 | Responder | 3h | 2015-08-11 10:00 | 2015-08-11 14:00 | 325 | 2015-08-10 15:00 | 2015-08-11 09:00 | 3h | 0d | Gabriel | 3h |
| 327 | 1.4.1.4.6 | Mensajes anteriores | 4h | 2015-08-11 14:00 | 2015-08-12 09:00 | 324 | 2015-08-11 09:00 | 2015-08-11 14:00 | 4h | 0d | Gabriel | 4h |
| 328 | 1.4.1.5 | **Mis Cotizaciones(Persona)** | 1.56d | 2015-08-12 09:00 | 2015-08-13 16:00 | 319 | 2015-08-11 14:00 | 2015-08-13 11:00 | 1.56d | 0d |  | 14h |
| 329 | 1.4.1.5.1 | BD | 2h | 2015-08-12 09:00 | 2015-08-12 11:00 |  | 2015-08-11 14:00 | 2015-08-11 16:00 | 2h | 0d | Gabriel | 2h |
| 330 | 1.4.1.5.2 | Indicadores | 2h | 2015-08-12 11:00 | 2015-08-12 14:00 | 329 | 2015-08-11 16:00 | 2015-08-12 09:00 | 2h | 0d | Gabriel | 2h |
| 331 | 1.4.1.5.3 | Filtro | 2h | 2015-08-12 14:00 | 2015-08-12 16:00 | 330 | 2015-08-12 09:00 | 2015-08-12 11:00 | 2h | 0d | Gabriel | 2h |
| 332 | 1.4.1.5.4 | Listado de propuestas | 4h | 2015-08-12 16:00 | 2015-08-13 11:00 | 331 | 2015-08-12 11:00 | 2015-08-12 16:00 | 4h | 0d | Gabriel | 4h |
| 333 | 1.4.1.5.5 | Paginacion | 2h | 2015-08-13 11:00 | 2015-08-13 14:00 | 332 | 2015-08-12 16:00 | 2015-08-13 09:00 | 2h | 0d | Gabriel | 2h |
| 334 | 1.4.1.5.6 | Pruebas unitarias | 2h | 2015-08-13 14:00 | 2015-08-13 16:00 | 333 | 2015-08-13 09:00 | 2015-08-13 11:00 | 2h | 0d | Gabriel | 2h |
| 335 | 1.4.1.6 | **Detalle Cotizacion(Persona)** | 2.22d | 2015-08-13 16:00 | 2015-08-19 11:00 | 328 | 2015-08-13 11:00 | 2015-08-18 16:00 | 2.22d | 0d |  | 20h |
| 336 | 1.4.1.6.1 | BD | 3h | 2015-08-13 16:00 | 2015-08-14 10:00 |  | 2015-08-13 11:00 | 2015-08-13 15:00 | 3h | 0d | Gabriel | 3h |
| 337 | 1.4.1.6.2 | Detalle de la solicitud | 2h | 2015-08-14 10:00 | 2015-08-14 12:00 | 336 | 2015-08-13 15:00 | 2015-08-13 17:00 | 2h | 0d | Gabriel | 2h |
| 338 | 1.4.1.6.3 | Listado de propuestas | 4h | 2015-08-14 13:00 | 2015-08-14 17:00 | 337 | 2015-08-14 08:00 | 2015-08-14 12:00 | 4h | 0d | Gabriel | 4h |
| 339 | 1.4.1.6.4 | Detalle de propuesta | 3h | 2015-08-18 08:00 | 2015-08-18 11:00 | 338 | 2015-08-14 13:00 | 2015-08-14 16:00 | 3h | 0d | Gabriel | 3h |
| 340 | 1.4.1.6.5 | Aceptar/Rechazar propiesta | 2h | 2015-08-18 11:00 | 2015-08-18 14:00 | 339 | 2015-08-14 16:00 | 2015-08-18 09:00 | 2h | 0d | Gabriel | 2h |
| 341 | 1.4.1.6.6 | Responder mensajes | 3h | 2015-08-18 14:00 | 2015-08-18 17:00 | 340 | 2015-08-18 09:00 | 2015-08-18 12:00 | 3h | 0d | Gabriel | 3h |
| 342 | 1.4.1.6.7 | Pruebas unitarias | 3h | 2015-08-19 08:00 | 2015-08-19 11:00 | 341 | 2015-08-18 13:00 | 2015-08-18 16:00 | 3h | 0d | Gabriel | 3h |

| ID | WBS | Task | Duration | Start | Finish | Predecessors | Baseline start | Baseline finish | Baseline duration | Total slack | Free slack | Resources | Work |
| --- | --- | --- | --- | --- | --- | --- | --- | --- | --- | --- | --- | --- | --- |
| 343 | 1.4.2 | **Diseño Web** | 7.11d | 2015-07-23 14:30 | 2015-08-04 14:30 | 272 | 2015-07-23 09:30 | 2015-08-04 09:30 | 7.11d | 13.06d |  |  | 64h |
| 344 | 1.4.2.1 | **Publicacion Servicio** | 2.67d | 2015-07-23 14:30 | 2015-07-28 14:30 |  | 2015-07-23 09:30 | 2015-07-28 09:30 | 2.67d | 13.06d | 0d |  | 24h |
| 345 | 1.4.2.1.1 | Paso1 | 0.89d | 2015-07-23 14:30 | 2015-07-24 14:30 |  | 2015-07-23 09:30 | 2015-07-24 09:30 | 0.89d | 13.06d | 0d | Julian | 8h |
| 346 | 1.4.2.1.2 | Paso2 | 0.89d | 2015-07-24 14:30 | 2015-07-27 14:30 | 345 | 2015-07-24 09:30 | 2015-07-27 09:30 | 0.89d | 13.06d | 0d | Julian | 8h |
| 347 | 1.4.2.1.3 | Paso3 | 0.89d | 2015-07-27 14:30 | 2015-07-28 14:30 | 346 | 2015-07-27 09:30 | 2015-07-28 09:30 | 0.89d | 13.06d |  | Julian | 8h |
| 348 | 1.4.2.2 | Publicar Cotizacion | 0.89d | 2015-07-28 14:30 | 2015-07-29 14:30 | 344 | 2015-07-28 09:30 | 2015-07-29 09:30 | 0.89d | 13.06d | 0d | Julian | 8h |
| 349 | 1.4.2.3 | Mis Cotizaciones (Taller) | 0.89d | 2015-07-29 14:30 | 2015-07-30 14:30 | 348 | 2015-07-29 09:30 | 2015-07-30 09:30 | 0.89d | 13.06d | 0d | Julian | 8h |
| 350 | 1.4.2.4 | Detalle Cotizacion(Taller) | 0.89d | 2015-07-30 14:30 | 2015-07-31 14:30 | 349 | 2015-07-30 09:30 | 2015-07-31 09:30 | 0.89d | 13.06d | 0d | Julian | 8h |
| 351 | 1.4.2.5 | Mis Cotizaciones(Persona) | 0.89d | 2015-07-31 14:30 | 2015-08-03 14:30 | 350 | 2015-07-31 09:30 | 2015-08-03 09:30 | 0.89d | 13.06d | 0d | Julian | 8h |
| 352 | 1.4.2.6 | Detalle Cotizacion(Persona) | 0.89d | 2015-08-03 14:30 | 2015-08-04 14:30 | 351 | 2015-08-03 09:30 | 2015-08-04 09:30 | 0.89d | 13.06d |  | Julian | 8h |
| 353 | 1.4.3 | Pruebas Generales | 2.67d | 2015-08-19 11:00 | 2015-08-24 11:00 | 275 | 2015-08-18 16:00 | 2015-08-21 16:00 | 2.67d | 0d |  | Julian | 24h |
| 354 | 1.4.4 | Correciones | 2.67d | 2015-08-24 11:00 | 2015-08-27 11:00 | 353 | 2015-08-21 16:00 | 2015-08-26 16:00 | 2.67d | 0d |  | Gabriel | 24h |
